How a schedule from an exported table changed from version to version. A marks actual dates.

## Version 1 (saved 2023-09-17)

| Task | Start | Finish |
| --- | --- | --- |
| Modelling and Analysis | Tue 12/09/23 | Tue 19/09/23 |
| Estimate Preparation | Tue 12/09/23 | Wed 13/09/23 |
| Static Load Analysis | Tue 12/09/23 | Sat 16/09/23 |
| Live Load Analysis | Thu 14/09/23 | Tue 19/09/23 |
| Sesmic Load Analysis | Sat 16/09/23 | Tue 19/09/23 |
| Remodelling as per Analysis | Wed 13/09/23 | Tue 19/09/23 |
| Prototyping | Thu 14/09/23 | Mon 02/10/23 |
| Verifying Inventory | Thu 14/09/23 | Fri 15/09/23 |
| Procurement (if any) | Sat 16/09/23 | Fri 22/09/23 |
| Reconfigure Prototype | Sat 23/09/23 | Mon 02/10/23 |
| Wood Science Team Collaboration | Tue 19/09/23 | Wed 04/10/23 |
| Kickoff Meeting | Tue 19/09/23 | Tue 19/09/23 |
| Inventory Verification | Wed 20/09/23 | Fri 22/09/23 |
| Prototyping using Timber | Mon 25/09/23 | Wed 04/10/23 |
| Situation Awareness | Mon 04/09/23 | Thu 02/11/23 |

## Version 2 (saved 2023-09-28)

Note of the change: Update latest_data.csv

Added:

| Task | Start | Finish |
| --- | --- | --- |
| Collaborative Project | Mon 04/09/23 | Thu 02/11/23 |
| Project Start to Finish | Mon 04/09/23 | Mon 04/09/23 |

Removed: Reconfigure Prototype; Prototyping using Timber

Changed:

| Task | Start | Finish |
| --- | --- | --- |
| Modelling and Analysis |  | Tue 19/09/23 → Wed 11/10/23 |
| Estimate Preparation |  | Wed 13/09/23 → Fri 29/09/23 |
| Static Load Analysis |  | Sat 16/09/23 → Thu 05/10/23 |
| Live Load Analysis |  | Tue 19/09/23 → Wed 11/10/23 |
| Sesmic Load Analysis |  | Tue 19/09/23 → Wed 11/10/23 |
| Remodelling as per Analysis | Wed 13/09/23 → Thu 05/10/23 | Tue 19/09/23 → Wed 11/10/23 |
| Prototyping | Thu 14/09/23 → Sat 30/09/23 | Mon 02/10/23 → Wed 18/10/23 |
| Verifying Inventory | Thu 14/09/23 → Sat 30/09/23 | Fri 15/09/23 → Sun 01/10/23 |
| Procurement (if any) | Sat 16/09/23 → Mon 02/10/23 | Fri 22/09/23 → Sun 08/10/23 |
| Wood Science Team Collaboration | Tue 19/09/23 → Fri 06/10/23 | Wed 04/10/23 → Sat 21/10/23 |
| Kickoff Meeting | Tue 19/09/23 → Fri 06/10/23 | Tue 19/09/23 → Fri 06/10/23 |
| Inventory Verification | Wed 20/09/23 → Sat 07/10/23 | Fri 22/09/23 → Mon 09/10/23 |

## Version 3 (saved 2023-12-04)

Note of the change: Update latest_data 04/12/23

Added:

| Task | Start | Finish |
| --- | --- | --- |
| Reconfigure Prototype | Mon 09/10/23 | Wed 18/10/23 |
| Prototyping using Timber | Thu 12/10/23 | Sat 21/10/23 |

## Version 4 (saved 2023-12-07)

Note of the change: Update and rename latest_data(3).csv to latest_data.csv

Removed: Prototyping using Timber
